Schedule from MS Project, 2017-08-07 to 2017-10-04, A marks actual dates.

## Calendars

- 标准: Mon-Fri 08:00-12:00, 13:00-17:00; Sat-Sun off.

## Resources

| Resource |
| --- |
| 陈小桂 |
| 王大鹏 |
| 梁廷森 |
| 付陈林 |
| 文栎波 |
| 张籽娟 |
| 李凯 |
| 郭婷 |
| 杨建 |
| 买晨雨 |

## Schedule

| ID | WBS | Task | Type | Duration | Start | Finish | Predecessors | Complete | Remaining | Total slack | Deadline | Resources | Work | Actual work |
| --- | --- | --- | --- | --- | --- | --- | --- | --- | --- | --- | --- | --- | --- | --- |
| 1 | 1 | **会员系统开发** |  | 19.5d | 2017-08-15 A | 2017-09-11 |  | 61% | 7.59d | 0d |  |  | 564h | 340h |
| 2 | 1.1 | **业务功能开发** |  | 19.5d | 2017-08-15 A | 2017-09-11 |  | 63% | 7.14d | 0d |  |  | 364h | 244h |
| 3 | 1.1.1 | 储值购买反结算 | manual | 1d | 2017-08-15 A | 2017-08-15 A |  | 100% |  |  | 2017-08-15 | 陈小桂; 李凯 | 8h | 8h |
| 4 | 1.1.2 | 卡券购买反结算 | manual | 1d | 2017-08-16 A | 2017-08-16 A | 3 | 100% |  |  |  | 陈小桂 | 8h | 8h |
| 5 | 1.1.3 | 卡包购买反结算 | manual | 1d | 2017-08-17 A | 2017-08-17 A | 4 | 100% |  |  |  | 陈小桂 | 8h | 8h |
| 6 | 1.1.4 | 储值、卡券、卡包购买打印结算单 | manual | 2d | 2017-08-17 A | 2017-08-18 A |  | 100% |  |  |  | 张籽娟 | 16h | 16h |
| 7 | 1.1.5 | 结算不开票 | manual | 1d | 2017-08-18 A | 2017-08-18 A | 5 | 100% |  |  |  | 陈小桂 | 8h | 8h |
| 8 | 1.1.6 | **结算增加规则** |  | 4d | 2017-08-22 A | 2017-08-25 A | 7 | 100% |  |  |  | 陈小桂 | 88h | 88h |
| 9 | 1.1.6.1 | 结算完后会员升级(生成会员级别调整记录) | manual | 2d | 2017-08-22 A | 2017-08-23 A |  | 100% |  |  |  | 陈小桂 | 16h | 16h |
| 10 | 1.1.6.2 | **根据会员规则结算** |  | 2d | 2017-08-24 A | 2017-08-25 A |  | 100% |  |  |  | 陈小桂 | 40h | 40h |
| 11 | 1.1.6.2.1 | 结算时增加积分累计规则 | manual | 1d | 2017-08-24 A | 2017-08-24 A |  | 100% |  |  |  | 陈小桂 | 8h | 8h |
| 12 | 1.1.6.2.2 | 结算时增加积分抵现规则 | manual | 1d | 2017-08-25 A | 2017-08-25 A |  | 100% |  |  |  | 陈小桂 | 8h | 8h |
| 13 | 1.1.6.2.3 | 结算时增加优惠折扣策略 | manual | 1d | 2017-08-25 A | 2017-08-25 A |  | 100% |  |  |  | 陈小桂 | 8h | 8h |
| 14 | 1.1.7 | **购买规则处理** |  | 1d | 2017-08-24 A | 2017-08-24 A |  | 100% |  |  |  |  | 8h | 8h |
| 15 | 1.1.7.1 | 储值完后会员升级(生成会员级别调整记录) | manual | 1d | 2017-08-24 A | 2017-08-24 A |  | 100% |  |  |  | 陈小桂 | 8h | 8h |
| 16 | 1.1.8 | 储值、卡券、卡包 界面整合 | manual | 5d | 2017-08-28 | 2017-09-01 | 8 |  |  |  |  | 陈小桂 | 40h |  |
| 17 | 1.1.9 | 客户微信端--储值明细改造 | manual | 1d | 2017-08-30 A | 2017-08-30 A |  | 100% |  |  |  | 郭婷; 张籽娟 | 16h | 16h |
| 18 | 1.1.10 | 客户微信端--积分明细改造 | manual | 1d | 2017-08-31 A | 2017-08-31 A |  | 100% |  |  |  | 郭婷; 张籽娟 | 16h | 16h |
| 19 | 1.1.11 | 卡券界面改造 | manual | 1d | 2017-09-01 | 2017-09-01 |  |  |  |  |  | 郭婷; 李凯 | 16h |  |
| 20 | 1.1.12 | 后台添加临时会员 | manual | 1d | 2017-08-15 A | 2017-08-15 A |  | 100% |  |  |  | 梁廷森 | 8h | 8h |
| 21 | 1.1.13 | 服务类型可多选处理 | manual | 2d | 2017-09-04 A | 2017-09-05 A |  | 100% |  |  |  | 陈小桂 | 16h | 16h |
| 22 | 1.1.14 | 费用类型可多选处理 | manual | 1d | 2017-08-15 | 2017-08-15 |  |  |  |  |  | 陈小桂 | 8h |  |
| 23 | 1.1.15 | 新增活动方案(基础数据) | manual | 0.5d | 2017-09-05 A | 2017-09-05 A |  | 100% |  |  |  | 张籽娟 | 4h | 4h |
| 24 | 1.1.16 | 卡券设置调整 | manual | 0.5d | 2017-09-05 A | 2017-09-05 A |  | 100% |  |  |  | 张籽娟 | 4h | 4h |
| 25 | 1.1.17 | 会员储值设置调整 | manual | 0.5d | 2017-09-06 | 2017-09-06 |  |  |  |  |  | 张籽娟 | 4h |  |
| 26 | 1.1.18 | 会员套餐设置调整 | manual | 0.5d | 2017-09-06 A | 2017-09-06 A |  | 100% |  |  |  | 张籽娟 | 4h | 4h |
| 27 | 1.1.19 | 新增会员及临时会员的时候增加车主姓名及手机号字段 | manual | 0.5d | 2017-09-07 | 2017-09-07 |  |  |  |  |  | 梁廷森 | 4h |  |
| 28 | 1.1.20 | 增加是否同时消费处理 | manual | 1d | 2017-09-06 A | 2017-09-06 A |  | 100% |  |  |  | 陈小桂 | 8h | 8h |
| 29 | 1.1.21 | 卡券购买时---增加积分抵扣功能 | manual | 1d | 2017-09-07 A | 2017-09-07 A |  | 100% |  |  |  | 陈小桂 | 8h | 8h |

| ID | WBS | Task | Type | Duration | Start | Finish | Complete | Remaining | Total slack | Resources | Work | Actual work |
| --- | --- | --- | --- | --- | --- | --- | --- | --- | --- | --- | --- | --- |
| 30 | 1.1.22 | **会员模块字段增加** |  | 1d | 2017-09-05 | 2017-09-05 |  |  |  | 梁廷森 | 16h |  |
| 31 | 1.1.22.1 | 会员业务新增调整 | manual | 1d | 2017-09-06 | 2017-09-06 |  |  |  | 梁廷森 | 8h |  |
| 32 | 1.1.23 | 会员业务查看调整 | manual | 0.5d | 2017-09-07 | 2017-09-07 |  |  |  | 张籽娟 | 4h |  |
| 33 | 1.1.24 | 卡券销售记录调整 | manual | 0.5d | 2017-09-08 A | 2017-09-08 A | 100% |  |  | 张籽娟 | 4h | 4h |
| 34 | 1.1.25 | 卡券发放记录调整 | manual | 0.5d | 2017-09-08 A | 2017-09-08 A | 100% |  |  | 张籽娟 | 4h | 4h |
| 35 | 1.1.26 | 卡券使用记录调整 | manual | 0.5d | 2017-09-11 A | 2017-09-11 A | 100% |  |  | 张籽娟 | 4h | 4h |
| 36 | 1.1.27 | 卡包销售记录调整 | manual | 0.5d | 2017-09-11 A | 2017-09-11 A | 100% |  |  | 张籽娟 | 4h | 4h |
| 37 | 1.1.28 | 会员储值记录调整 | manual | 0.5d | 2017-09-06 | 2017-09-06 |  |  |  | 李凯 | 4h |  |
| 38 | 1.1.29 | 会员购买记录调整 | manual | 0.5d | 2017-09-06 | 2017-09-06 |  |  |  | 李凯 | 4h |  |
| 39 | 1.1.30 | 会员储值记录调整 | manual | 0.5d | 2017-09-07 | 2017-09-07 |  |  |  | 李凯 | 4h |  |
| 40 | 1.1.31 | 会员消费记录调整 | manual | 0.5d | 2017-09-07 | 2017-09-07 |  |  |  | 李凯 | 4h |  |
| 41 | 1.1.32 | 会员扫码记录调整 | manual | 0.5d | 2017-09-08 | 2017-09-08 |  |  |  | 李凯 | 4h |  |
| 42 | 1.1.33 | 卡券PC端扫码记录调整 | manual | 0.5d | 2017-09-08 | 2017-09-08 |  |  |  | 李凯 | 4h |  |
| 43 | 1.1.34 | 会员冻结记录调整 | manual | 0.5d | 2017-09-11 | 2017-09-11 |  |  |  | 李凯 | 4h |  |
| 44 | 1.2 | **规则定时任务** |  | 17d | 2017-08-15 A | 2017-09-06 | 57% | 7.29d | 0d |  | 200h | 96h |
| 45 | 1.2.1 | 会员卡券过期更新 | manual | 1d | 2017-08-15 A | 2017-08-15 A | 100% |  |  | 王大鹏 | 8h | 8h |
| 46 | 1.2.2 | 会员积分过期更新 | manual | 1d | 2017-08-15 A | 2017-08-15 A | 100% |  |  | 王大鹏 | 8h | 8h |
| 47 | 1.2.3 | 会员储值过期更新 | manual | 1d | 2017-08-15 A | 2017-08-15 A | 100% |  |  | 王大鹏 | 8h | 8h |
| 48 | 1.2.4 | 会员升级定时任务 | manual | 1d | 2017-08-15 A | 2017-08-15 A | 100% |  |  | 王大鹏 | 8h | 8h |
| 49 | 1.2.5 | 会员降级定时任务 | manual | 1d | 2017-08-15 A | 2017-08-15 A | 100% |  |  | 王大鹏 | 8h | 8h |
| 50 | 1.2.6 | 会员权益定时任务 | manual | 1d | 2017-08-15 A | 2017-08-15 A | 100% |  |  | 王大鹏 | 8h | 8h |
| 51 | 1.2.7 | 会员卡券到期提醒 | manual | 1d | 2017-08-15 A | 2017-08-15 A | 100% |  |  | 王大鹏 | 8h | 8h |
| 52 | 1.2.8 | 会员积分到期提醒 | manual | 1d | 2017-08-15 A | 2017-08-15 A | 100% |  |  | 王大鹏 | 8h | 8h |
| 53 | 1.2.9 | 会员生日到期提醒 | manual | 1d | 2017-08-15 A | 2017-08-15 A | 100% |  |  | 王大鹏 | 8h | 8h |
| 54 | 1.2.10 | 会员储值到期提醒 | manual | 1d | 2017-08-15 A | 2017-08-15 A | 100% |  |  | 王大鹏 | 8h | 8h |
| 55 | 1.2.11 | 会员首保到期提醒 | manual | 1d | 2017-08-21 | 2017-08-21 |  |  |  | 王大鹏 | 8h |  |
| 56 | 1.2.12 | 会员保养到期提醒 | manual | 1d | 2017-08-21 | 2017-08-21 |  |  |  | 王大鹏 | 8h |  |
| 57 | 1.2.13 | 会员保险到期提醒 | manual | 1d | 2017-08-21 A | 2017-08-21 A | 100% |  |  | 王大鹏 | 8h | 8h |
| 58 | 1.2.14 | 驾照年审到期提醒 | manual | 1d | 2017-08-22 A | 2017-08-22 A | 100% |  |  | 王大鹏 | 8h | 8h |
| 59 | 1.2.15 | 车辆年检到期提醒 | manual | 1d | 2017-08-22 | 2017-08-22 |  |  |  | 王大鹏 | 8h |  |
| 60 | 1.2.16 | 会员购买提醒 | manual | 2d | 2017-08-29 | 2017-08-30 |  |  |  | 王大鹏; 陈小桂 | 32h |  |
| 61 | 1.2.17 | 会员消费结账（问卷调查） | manual | 2d | 2017-08-31 | 2017-09-01 |  |  |  | 王大鹏; 陈小桂 | 32h |  |
| 62 | 1.2.18 | 自定义天数提醒 | manual | 2d | 2017-09-05 | 2017-09-06 |  |  |  | 王大鹏 | 16h |  |

| ID | WBS | Task | Type | Duration | Start | Finish | Complete | Remaining | Total slack | Resources | Work | Actual work |
| --- | --- | --- | --- | --- | --- | --- | --- | --- | --- | --- | --- | --- |
| 63 | 2 | **商周数据导入** |  | 1d | 2017-08-16 A | 2017-08-16 | 63% | 0.38d | 0d |  | 32h | 20h |
| 64 | 2.1 | 北京博恩商周数据导入 | manual | 1d | 2017-08-16 A | 2017-08-16 A | 100% |  |  | 梁廷森 | 8h | 8h |
| 65 | 2.2 | 陕西瑞迪商周数据初始化导出 | manual | 0.5d | 2017-08-16 A | 2017-08-16 A | 100% |  |  | 梁廷森 | 4h | 4h |
| 66 | 2.3 | 陕西博宝商周数据初始化导出 | manual | 0.5d | 2017-08-16 A | 2017-08-16 A | 100% |  |  | 梁廷森 | 4h | 4h |
| 67 | 2.4 | 陕西瑞捷商周数据初始化导出 | manual | 0.5d | 2017-08-16 A | 2017-08-16 A | 100% |  |  | 梁廷森 | 4h | 4h |
| 68 | 2.5 | 陕西瑞迪商周数据核实导入 | manual | 0.5d | 2017-08-16 | 2017-08-16 |  |  |  | 梁廷森 | 4h |  |
| 69 | 2.6 | 陕西博宝商周数据核实导入 | manual | 0.5d | 2017-08-16 | 2017-08-16 |  |  |  | 梁廷森 | 4h |  |
| 70 | 2.7 | 陕西瑞捷商周数据核实导入 | manual | 0.5d | 2017-08-16 | 2017-08-16 |  |  |  | 梁廷森 | 4h |  |
| 71 | 3 | **业务报表开发** |  | 23d | 2017-08-16 | 2017-09-15 |  |  | 0d |  | 56h |  |
| 72 | 3.1 | **运通汇系统客服业务报表-经销店** |  | 1d | 2017-08-16 | 2017-08-16 |  |  | 0d |  |  |  |
| 73 | 3.1.1 | 事业部客服经理-会员管理报表 | manual | 1d? | 2017-08-16 | 2017-08-16 |  |  |  |  |  |  |
| 74 | 3.1.2 | 经销店客服-会员权益列表 | manual | 1d? | 2017-08-16 | 2017-08-16 |  |  |  |  |  |  |
| 75 | 3.1.3 | 经销店客服-会员权益统计 | manual | 1d? | 2017-08-16 | 2017-08-16 |  |  |  |  |  |  |
| 76 | 3.2 | **运通汇报表** |  | 1d | 2017-09-11 | 2017-09-11 |  |  |  |  | 56h |  |
| 77 | 3.2.1 | **财务统计报表** |  | 1d | 2017-09-11 | 2017-09-11 |  |  |  |  | 40h |  |
| 78 | 3.2.1.1 | 会员权益列表 | manual | 3d | 2017-09-11 | 2017-09-13 |  |  |  | 张籽娟 | 24h |  |
| 79 | 3.2.1.2 | 会员权益统计 | manual | 2d | 2017-09-14 | 2017-09-15 |  |  |  | 张籽娟 | 16h |  |
| 80 | 3.2.2 | 运通汇会员管理模块报表-财务统计 | manual | 2d | 2017-09-11 | 2017-09-12 |  |  |  | 梁廷森 | 16h |  |
| 81 | 4 | **云之家轻应用开发** |  | 23d | 2017-08-07 A | 2017-09-06 | 70% | 6.9d | 0d |  | 208h | 144h |
| 82 | 4.1 | 投诉建议应用开发 | manual | 5d | 2017-08-07 A | 2017-08-11 A | 100% |  |  |  |  |  |
| 83 | 4.2 | **开票信息应用开发** |  | 6d | 2017-08-16 A | 2017-08-23 A | 100% |  |  | 李凯 | 120h | 120h |
| 84 | 4.2.1 | 接口开发 | manual | 2d | 2017-08-16 A | 2017-08-17 A | 100% |  |  | 李凯 | 16h | 16h |
| 85 | 4.2.2 | 界面开发 | manual | 2d | 2017-08-18 A | 2017-08-21 A | 100% |  |  | 李凯; 郭婷 | 32h | 32h |
| 86 | 4.2.3 | 界面接口调试 | manual | 1d | 2017-08-22 A | 2017-08-22 A | 100% |  |  | 李凯; 郭婷 | 16h | 16h |
| 87 | 4.2.4 | 测试上线 | manual | 1d | 2017-08-23 A | 2017-08-23 A | 100% |  |  | 文栎波 | 8h | 8h |

| ID | WBS | Task | Type | Duration | Start | Finish | Complete | Remaining | Total slack | Resources | Work | Actual work |
| --- | --- | --- | --- | --- | --- | --- | --- | --- | --- | --- | --- | --- |
| 88 | 4.3 | **电子名片应用开发** |  | 17d | 2017-08-15 A | 2017-09-06 | 43% | 9.71d | 0d |  | 88h | 24h |
| 89 | 4.3.1 | 接口开发 | manual | 2d | 2017-08-15 A | 2017-08-16 A | 100% |  |  | 李凯 | 16h | 16h |
| 90 | 4.3.2 | 界面开发 | manual | 1d | 2017-08-25 A | 2017-08-25 A | 100% |  |  | 郭婷 | 8h | 8h |
| 91 | 4.3.3 | 界面接口调试 | manual | 1d | 2017-08-28 | 2017-08-28 |  |  |  | 郭婷; 李凯 | 16h |  |
| 92 | 4.3.4 | 增加用户新增功能 | manual | 1d | 2017-09-04 | 2017-09-04 |  |  |  | 郭婷; 李凯 | 16h |  |
| 93 | 4.3.5 | 增加审批处理 | manual | 1d | 2017-09-05 | 2017-09-05 |  |  |  | 李凯 | 8h |  |
| 94 | 4.3.6 | 测试上线 | manual | 1d | 2017-09-06 | 2017-09-06 |  |  |  | 文栎波; 郭婷; 李凯 | 24h |  |
| 95 | 4.4 | 审批消息列表展示 | manual | 1d? | 2017-08-07 | 2017-08-07 |  |  |  |  |  |  |
| 96 | 4.5 | 云之家审批代办消息提醒 | manual | 1d? | 2017-08-07 | 2017-08-07 |  |  |  |  |  |  |
| 97 | 5 | **bug修改** |  | 12d | 2017-08-15 A | 2017-08-30 | 47% | 6.32d | 0d |  | 152h | 72h |
| 98 | 5.1 | 温州欣奥会员导入 | manual | 1d | 2017-08-15 A | 2017-08-15 A | 100% |  |  | 梁廷森 | 8h | 8h |
| 99 | 5.2 | 重庆汇捷无限卡券显示为单次问题 | manual | 1d | 2017-08-21 A | 2017-08-21 A | 100% |  |  | 陈小桂 | 8h | 8h |
| 100 | 5.3 | 北京兴奥无法结算问题 | manual | 1d | 2017-08-21 A | 2017-08-21 A | 100% |  |  | 陈小桂 | 8h | 8h |
| 101 | 5.4 | 服务类型关闭 | manual | 1d | 2017-08-30 | 2017-08-30 |  |  |  | 张籽娟 | 8h |  |
| 102 | 5.5 | 条件参数，本次实付工时费,本次实付材料费、本次实付金额 | manual | 1d | 2017-08-29 | 2017-08-29 |  |  |  | 梁廷森 | 8h |  |
| 103 | 5.6 | 积分调整类型， 增加一个调整金额。 | manual | 1d | 2017-08-29 | 2017-08-29 |  |  |  | 李凯 | 8h |  |
| 104 | 5.7 | 积分抵现规则，修改名称 积分单次最高使用比例、积分抵现比例 | manual | 1d | 2017-08-28 A | 2017-08-28 A | 100% |  |  | 张籽娟 | 8h | 8h |
| 105 | 5.8 | 卡券设置 服务类型可多选、卡券分类可以修改 | manual | 2d | 2017-08-29 | 2017-08-30 |  |  |  | 张籽娟 | 16h |  |
| 106 | 5.9 | 会员套餐，卡券售卖价变更成为单张售卖价 | manual | 1d | 2017-08-28 A | 2017-08-28 A | 100% |  |  | 张籽娟 | 8h | 8h |
| 107 | 5.10 | 添加会员时。存在错别字，，为 | manual | 1d | 2017-08-28 A | 2017-08-28 A | 100% |  |  | 张籽娟 | 8h | 8h |
| 108 | 5.11 | 消费结账 默认已开票 | manual | 2d | 2017-08-28 A | 2017-08-29 A | 100% |  |  | 陈小桂 | 16h | 16h |
| 109 | 5.12 | (微信申请临时会员)客户在注册运通汇的时候 客户姓名和出生年月日都要输入两次 如果先输入了姓名和生日 再去绑定车辆的话 出来的界面就又要输入生日姓名，能否操作简化 | manual | 1d | 2017-08-15 A | 2017-08-15 A | 100% |  |  | 梁廷森 | 8h | 8h |
| 110 | 5.13 | （供应商扫码记录）第三方供应商扫码记录，是否可以在后面显示操作人；不然无法统计操作数量，扫码人 | manual | 1d | 2017-08-15 | 2017-08-15 |  |  |  | 李凯 | 8h |  |
| 111 | 5.14 | (会员消息模板)给客户发送提醒短信，设置好了，但是没有发送出去； | manual | 1d | 2017-08-15 | 2017-08-15 |  |  |  | 王大鹏 | 8h |  |
| 112 | 5.15 | (卡券设置)由于车主和会员注册人（用车人）有可能不是同一人，手机号也不一致，选择会员界面需要添加底盘号或车主姓名，以便快速准确找到客户 | manual | 1d | 2017-08-15 | 2017-08-15 |  |  |  | 陈小桂 | 8h |  |
| 113 | 5.16 | (会员管理条件参数)需要添加两个条件参数，“近一年消费金额”、“累计消费金额”、“服务类别”——（保养、维修、事故理赔、索赔、首保、召回、其他） | manual | 1d | 2017-08-15 | 2017-08-15 |  |  |  | 梁廷森 | 8h |  |
| 114 | 5.17 | 1、运通生活：活动管理状态，招募中和活动中所显示的活动不全2、活动上传时的限制人数，只能填写人数和选择不限制，不能空白。3、活动费用，如果是0元，选择免费，不允许写0元，客户支付不了。 | manual | 1d | 2017-08-15 | 2017-08-15 |  |  |  | 梁廷森 | 8h |  |

| ID | WBS | Task | Type | Duration | Start | Finish | Predecessors | Complete | Remaining | Constraint | Resources | Work | Actual work |
| --- | --- | --- | --- | --- | --- | --- | --- | --- | --- | --- | --- | --- | --- |
| 115 | 6 | **高可用系统框架** |  | 8d | 2017-08-14 A | 2017-08-23 |  | 50% | 4d |  |  | 120h | 62.4h |
| 116 | 6.1 | **方案整理** |  | 8d | 2017-08-14 A | 2017-08-23 |  | 60% | 3.2d |  | 王大鹏 | 120h | 62.4h |
| 117 | 6.1.1 | 方案制定 | manual | 3d | 2017-08-14 A | 2017-08-16 A |  | 100% |  |  | 王大鹏 | 24h | 24h |
| 118 | 6.1.2 | 方案讨论 | manual | 1d | 2017-08-21 | 2017-08-21 |  |  |  |  | 付陈林; 王大鹏 | 16h |  |
| 119 | 6.1.3 | 方案确认 | manual | 1d | 2017-08-23 | 2017-08-23 |  |  |  |  | 付陈林; 王大鹏 | 16h |  |
| 120 | 6.2 | 方案实施 | manual | 1d? | 2017-08-14 | 2017-08-14 |  |  |  |  |  |  |  |
| 121 | 7 | **财务系统开票明细** |  | 1d | 2017-08-16 | 2017-08-16 |  |  |  |  |  | 8h |  |
| 122 | 7.1 | DSM数据对接调研 | manual | 1d | 2017-08-16 | 2017-08-16 |  |  |  |  | 付陈林 | 8h |  |
| 123 | 8 | **商城系统开发** |  | 15d | 2017-09-06 | 2017-09-26 |  |  |  |  |  | 208h |  |
| 124 | 8.1 | **商城需求调研** |  | 5d | 2017-09-06 | 2017-09-12 |  |  |  |  |  | 120h |  |
| 125 | 8.1.1 | 客服委员会需求调研 | manual | 3d | 2017-09-06 | 2017-09-08 | 126 |  |  | start no earlier than 2017-09-06 | 付陈林; 文栎波; 杨建 | 72h |  |
| 126 | 8.1.2 | 用品需求调研 | manual | 2d | 2017-09-11 | 2017-09-12 |  |  |  |  | 付陈林; 杨建; 文栎波 | 48h |  |
| 127 | 8.2 | **商城设计** |  | 6d | 2017-09-14 | 2017-09-21 |  |  |  |  |  | 88h |  |
| 128 | 8.2.1 | 前端UI设计 | manual | 3d | 2017-09-14 | 2017-09-18 |  |  |  |  | 杨建 | 24h |  |
| 129 | 8.2.2 | 后台原型设计 | manual | 3d | 2017-09-14 | 2017-09-18 |  |  |  |  | 付陈林 | 24h |  |
| 130 | 8.2.3 | 业务表结构设计 | manual | 2d | 2017-09-19 | 2017-09-20 |  |  |  |  | 付陈林 | 16h |  |
| 131 | 8.2.4 | 前端设计讨论确定 | manual | 1d | 2017-09-18 | 2017-09-18 |  |  |  |  | 杨建 | 8h |  |
| 132 | 8.2.5 | 后台原型设计讨论确定 | manual | 1d | 2017-09-21 | 2017-09-21 |  |  |  |  | 付陈林 | 8h |  |
| 133 | 8.2.6 | 业务表结构讨论确定 | manual | 1d | 2017-09-21 | 2017-09-21 |  |  |  |  | 付陈林 | 8h |  |
| 134 | 8.3 | 商城开发 | manual | 1d? | 2017-09-06 | 2017-09-06 |  |  |  |  |  |  |  |
| 135 | 8.4 | 商城测试上线 | manual | 1d? | 2017-09-06 | 2017-09-06 |  |  |  |  |  |  |  |
| 136 | 9 | **太平洋保险接口对接** |  | 25d | 2017-08-31 A | 2017-10-04 |  | 15% | 21.34d |  |  | 164h | 24h |
| 137 | 9.1 | 接口加密加签 | manual | 1d | 2017-08-31 A | 2017-08-31 A |  | 100% |  |  | 王大鹏 | 8h | 8h |
| 138 | 9.2 | 车型查询 | manual | 1d | 2017-09-01 A | 2017-09-01 A |  | 100% |  |  | 王大鹏 | 8h | 8h |
| 139 | 9.3 | 行业车型查询 | manual | 1d | 2017-09-04 A | 2017-09-04 A |  | 100% |  |  | 王大鹏 | 8h | 8h |
| 140 | 9.4 | 保费计算 | manual | 1.5d | 2017-09-07 | 2017-09-08 |  |  |  |  | 王大鹏 | 12h |  |
| 141 | 9.5 | 预核保提交 | manual | 1.5d | 2017-09-08 | 2017-09-11 |  |  |  |  | 王大鹏 | 12h |  |
| 142 | 9.6 | 核保提交 | manual | 1d | 2017-09-12 | 2017-09-12 |  |  |  |  | 王大鹏 | 8h |  |
| 143 | 9.7 | 提交两核 | manual | 1.5d | 2017-09-13 | 2017-09-14 |  |  |  |  | 王大鹏 | 12h |  |
| 144 | 9.8 | 支付申请 | manual | 2d | 2017-09-14 | 2017-09-15 |  |  |  |  | 王大鹏 | 16h |  |
| 145 | 9.9 | 支付申请作废 | manual | 1d | 2017-09-19 | 2017-09-19 |  |  |  |  | 王大鹏 | 8h |  |
| 146 | 9.10 | 保单误核删除 | manual | 1d | 2017-09-20 | 2017-09-20 |  |  |  |  | 王大鹏 | 8h |  |
| 147 | 9.11 | 手工签发 | manual | 1d | 2017-09-21 | 2017-09-21 |  |  |  |  | 王大鹏 | 8h |  |
| 148 | 9.12 | 北京电子保单补发 | manual | 1d | 2017-09-22 | 2017-09-22 |  |  |  |  | 王大鹏 | 8h |  |
| 149 | 9.13 | 北京身份证采集 | manual | 1d | 2017-09-25 | 2017-09-25 |  |  |  |  | 王大鹏 | 8h |  |
| 150 | 9.14 | 北京身份采集验证码更新 | manual | 1d | 2017-09-26 | 2017-09-26 |  |  |  |  | 王大鹏 | 8h |  |
| 151 | 9.15 | 北京新车备案 | manual | 1d | 2017-09-27 | 2017-09-27 |  |  |  |  | 王大鹏 | 8h |  |
| 152 | 9.16 | 北京电子投保单短信确认接口 | manual | 1d | 2017-09-28 | 2017-09-28 |  |  |  |  | 王大鹏 | 8h |  |
| 153 | 9.17 | 人工核保结果回调接口（合作伙伴实现） | manual | 1d | 2017-09-29 | 2017-09-29 |  |  |  |  | 王大鹏 | 8h |  |
| 154 | 9.18 | 保单生效回调接口（合作伙伴实现） | manual | 1d | 2017-10-03 | 2017-10-03 |  |  |  |  | 王大鹏 | 8h |  |
